# openETCS-sutbask

Schedule from MS Project, 2012-10-10 to 2014-06-27.

## Calendars

- Standard: Mon-Fri 08:00-12:00, 13:00-17:00; Sat-Sun off.

## Schedule

| ID | WBS | Task | Type | Duration | Start | Finish | Predecessors | Total slack | Free slack | Constraint |
| --- | --- | --- | --- | --- | --- | --- | --- | --- | --- | --- |
| 1 | 1 | **WP2** |  | 60d | 2012-10-10 | 2013-01-01 |  | 16d |  |  |
| 2 | 1.1 | WP2 dummy |  | 3mo | 2012-10-10 | 2013-01-01 |  | 16d | 0d | finish no earlier than 2013-01-01 |
| 3 | 1.2 | D2.5: Methods and tools benchmarking methodology |  | 99d | 2013-01-15 | 2013-05-31 |  | 0d |  |  |
| 4 | 1.3 | **WP2: Small representative subset of ERTMS requirements in order to evaluate tools/languages** |  | 0d | 2013-01-01 | 2013-01-01 | 2 | 16d | 0d |  |
| 5 | 1.3.1 | D 2.5b: intermediate DMethods and tools benchmarking methodology | milestone, manual | 0d | 2013-03-15 | 2013-03-15 |  |  |  |  |
| 6 | 1.3.2 | D 2.5c: Final Methods and tools benchmarking methodology | milestone, manual | 0d | 2013-05-31 | 2013-05-31 |  |  |  |  |
| 7 | 1.4 | D2.1: Report on existing methodologies |  | 53d | 2013-01-02 | 2013-03-15 |  | 0d |  |  |
| 8 | 1.5 | **WP2: List of suitable means of description** |  | 0d | 2013-01-01 | 2013-01-01 | 2 | 16d | 0d |  |
| 9 | 1.5.1 | D2.1b: Report on existing methodologies (intermediate) | milestone, manual | 0d | 2013-03-15 | 2013-03-15 |  |  |  |  |
| 10 | 1.5.2 | D2.1: Report on existing methodologies (final) | milestone, manual | 0d | 2013-03-15 | 2013-03-15 |  |  |  |  |
| 11 | 1.6 | D2.2: Set of requirements to be fulfilled according to CENELEC standards (state-of-the-art) |  | 1d? | 2013-01-24 | 2013-01-24 |  | 451d |  |  |
| 12 | 1.7 | **WP2: List of suitable tools (based on State of the Art Analysis)** |  | 0d | 2013-01-01 | 2013-01-01 | 2 | 176d | 80d |  |
| 13 | 1.7.1 | D2.2a: Set of requirements to be fulfilled according to CENELEC standards (state-of-the-art) | milestone, manual | 0d | 2013-01-15 | 2013-01-15 |  |  |  |  |
| 14 | 1.7.2 | D2.2b: Set of requirements to be fulfilled according to CENELEC standards (state-of-the-art) | milestone, manual | 0d | 2013-03-15 | 2013-03-15 |  |  |  |  |
| 15 | 1.7.3 | D2.2c: Set of requirements to be fulfilled according to CENELEC standards (state-of-the-art) | milestone, manual | 0d | 2013-05-31 | 2013-05-31 |  |  |  |  |
| 16 | 1.8 | D2.3: Definition of the overall process for the formal description of ETCS and the rail system it works in |  | 98d | 2013-01-15 | 2013-05-31 |  | 0d |  |  |
| 17 | 1.9 | **WP2: List of target platforms, based on the tools being evaluated (1.2)** |  | 0d | 2013-01-01 | 2013-01-01 | 2 | 96d | 80d |  |
| 18 | 1.9.1 | D 2.3a: preliminary Definition of the overall process for the formal description of ETCS and the rail system it works in | milestone, manual | 0d | 2013-01-15 | 2013-01-15 |  |  |  |  |
| 19 | 1.9.2 | D 2.3b: intermediate Definition of the overall process for the formal description of ETCS and the rail system it works in | milestone, manual | 0d | 2013-03-15 | 2013-03-15 |  |  |  |  |
| 20 | 1.9.3 | D 2.3c: Final Definition of the overall process for the formal description of ETCS and the rail system it works in | milestone, manual | 0d | 2013-05-31 | 2013-05-31 |  |  |  |  |
| 21 | 1.10 | **D2.4: Definition of the methods used to perform the formal description** |  | 98d | 2013-01-15 | 2013-05-31 |  | 0d |  |  |
| 22 | 1.10.1 | D 2.4a: preliminary Definition of the methods used to perform the formal description | milestone, manual | 0d | 2013-01-15 | 2013-01-15 |  |  |  |  |
| 23 | 1.10.2 | D 2.4b: intermediate Definition of the methods used to perform the formal description | milestone, manual | 0d | 2013-03-15 | 2013-03-15 |  |  |  |  |
| 24 | 1.10.3 | D 2.4c: Final Definition of the methods used to perform the formal description | milestone, manual | 0d | 2013-05-31 | 2013-05-31 |  |  |  |  |
| 25 | 1.11 | D2.6: Set of requirements for the model used and the modeling process: |  | 98d | 2013-01-15 | 2013-05-31 |  | 0d |  |  |

| ID | WBS | Task | Type | Duration | Start | Finish | Predecessors | Total slack | Free slack | Constraint |
| --- | --- | --- | --- | --- | --- | --- | --- | --- | --- | --- |
| 26 | 1.12 | **WP2: Preliminary requirements** |  | 0d | 2013-01-01 | 2013-01-01 | 2 | 16d | 0d |  |
| 27 | 1.12.1 | D 2.5b: intermediate Set of requirements for the model used and the modeling process: | milestone, manual | 0d | 2013-03-15 | 2013-03-15 |  |  |  |  |
| 28 | 1.13 | WP2: Requirements | milestone | 0d | 2013-01-01 | 2013-01-01 | 2 | 16d | 0d |  |
| 29 | 1.14 | **D2.7: Set of requirements for API:** |  | 98d | 2013-01-15 | 2013-05-31 |  | 0d |  |  |
| 30 | 1.14.1 | D 2.7a: preliminary Set of requirements for API: | milestone, manual | 0d | 2013-01-15 | 2013-01-15 |  |  |  |  |
| 31 | 1.15 | **WP2: Definition of method / process** |  | 0d | 2013-01-01 | 2013-01-01 | 2 | 156d | 80d |  |
| 32 | 1.15.1 | D 2.7b: intermediate Set of requirements for API: | milestone, manual | 0d | 2013-03-15 | 2013-03-15 |  |  |  |  |
| 33 | 1.15.2 | D 2.7c Final Set of requirements for API: | milestone, manual | 0d | 2013-05-31 | 2013-05-31 |  |  |  |  |
| 34 | 1.16 | **D2.8: Set of requirements for the tools used:** |  | 98d | 2013-01-15 | 2013-05-31 |  | 0d |  |  |
| 35 | 1.16.1 | D 2.8a: preliminary Set of requirements for the tools used: | milestone, manual | 0d | 2013-01-15 | 2013-01-15 |  |  |  |  |
| 36 | 1.16.2 | D 2.8b: intermediate Set of requirements for the tools used: | milestone, manual | 0d | 2013-03-15 | 2013-03-15 |  |  |  |  |
| 37 | 1.16.3 | D 2.8c final Set of requirements for the tools used: | milestone, manual | 0d | 2013-05-31 | 2013-05-31 |  |  |  |  |
| 38 | 1.17 | **D2.9: Set of requirements for the verification and validation process:** |  | 98d | 2013-01-15 | 2013-05-31 |  | 0d |  |  |
| 39 | 1.17.1 | D2.9a: preliminary Set of requirements for the verification and validation process: | milestone, manual | 0d | 2013-01-15 | 2013-01-15 |  |  |  |  |
| 40 | 1.17.2 | D2.9b: intermediate Set of requirements for the verification and validation process: | milestone, manual | 0d | 2013-03-15 | 2013-03-15 |  |  |  |  |
| 41 | 1.17.3 | D2.9c: final Set of requirements for the verification and validation process: | milestone, manual | 0d | 2013-05-31 | 2013-05-31 |  |  |  |  |
| 42 | 2 | **WP7: Toolchain** |  | 316d | 2013-01-02 | 2014-03-19 |  | 0d |  |  |
| 43 | 2.1 | **7.1 - Primary Tool Chain Analyses and Recommendations** |  | 140d | 2013-01-02 | 2013-07-16 |  | 16d |  |  |
| 44 | 2.1.1 | **T7.1.1. - Identify and define the potential means of description** |  | 120d | 2013-01-02 | 2013-06-18 | 8, 4, 26, 28 | 16d |  |  |
| 45 | 2.1.1.1 | O7.1.1 Formal Model representing the sample spec, one for each candidate |  | 4mo | 2013-01-02 | 2013-04-23 |  | 196d | 0d | start no earlier than 2013-01-01 |
| 46 | 2.1.1.2 | O7.1.2 Documentation of the changes to each means of description used (if any) |  | 1mo | 2013-04-24 | 2013-05-21 | 45 | 216d |  |  |
| 47 | 2.1.1.3 | O7.1.3 Evaluation of the models against the WP2 requirements |  | 1mo | 2013-04-24 | 2013-05-21 | 45 | 196d | 0d |  |
| 48 | 2.1.1.4 | O7.1.4 Decision on the final means of description choice(s) |  | 1mo | 2013-05-22 | 2013-06-18 | 47 | 196d | 0d |  |
| 49 | 2.1.2 | **T7.1.2 - Identify and compare existing modelling tools** |  | 60d | 2013-04-24 | 2013-07-16 | 12, 26, 28, 8 | 76d |  |  |
| 50 | 2.1.2.1 | O7.1.6 Documentation of the changes to each tool (if any) |  | 1mo | 2013-04-24 | 2013-05-21 | 45 | 296d | 216d |  |
| 51 | 2.1.2.2 | O7.1.7 Evaluation of the tools against the WP2 requirements |  | 1mo | 2013-04-24 | 2013-05-21 | 45 | 276d | 20d |  |
| 52 | 2.1.2.3 | O7.1.8 Decision on final tool choice(s) |  | 1mo | 2013-10-21 | 2013-11-15 | 51 | 240d |  |  |
| 53 | 2.1.2.4 | D7.1 Report on the final choice(s) for the primary tool chain (means of description, tool and platform) |  | 1mo | 2013-06-19 | 2013-07-16 | 51, 48 | 256d | 20d |  |

| ID | WBS | Task | Duration | Start | Finish | Predecessors | Total slack | Free slack |
| --- | --- | --- | --- | --- | --- | --- | --- | --- |
| 54 | 2.1.3 | **T7.1.3 Identify the tool platform** | 40d | 2013-04-24 | 2013-06-18 | 17, 26, 28, 8 | 16d |  |
| 55 | 2.1.3.1 | O7.1.9 Evaluation of each tool platform against WP2 requirements, independent of target tool | 1mo | 2013-04-24 | 2013-05-21 | 45 | 196d | 0d |
| 56 | 2.1.3.2 | O7.1.10 Evaluation of tool platform in the context of specific target tools | 1mo | 2013-04-24 | 2013-05-21 | 45 | 196d | 0d |
| 57 | 2.1.3.3 | O7.1.11 Selection of Tool Platform (and reasoning) | 1mo | 2013-05-22 | 2013-06-18 | 56, 55 | 196d | 40d |
| 58 | 2.2 | **T7.2 - Secondary Tools Analyses and Recommendations** | 124d | 2013-04-18 | 2013-10-08 |  | 0d |  |
| 59 | 2.2.1 | **T7.2.1 - Identify and define the supporting tools and methods** | 80d | 2013-04-24 | 2013-08-13 | 8, 4, 26, 31, 48FS-3mo, 45, 18 | 156d |  |
| 60 | 2.2.1.1 | O7.2.1 Evaluation of supporting tools and methods against the WP2 requirements and task 1 choices | 3mo | 2013-04-24 | 2013-07-16 | 45 | 336d | 0d |
| 61 | 2.2.1.2 | O7.2.2 Decision on the supporting tool coice(s) | 1mo | 2013-12-16 | 2014-01-10 | 60 | 200d |  |
| 62 | 2.2.1.3 | D7.2 Report on all aspects of secondary tooling (results of T7.2) | 1mo | 2013-07-17 | 2013-08-13 | 60 | 336d | 0d |
| 63 | 2.2.2 | **T7.2.2 - Model Transformation and Code Generation** | 80d | 2013-06-19 | 2013-10-08 | 28, 48 | 16d |  |
| 64 | 2.2.2.1 | O7.2.3 Model Transformation Strategy | 4mo | 2013-06-19 | 2013-10-08 |  | 196d | 116d |
| 65 | 2.2.2.2 | O7.2.4 Code Generation Strategy | 4mo | 2013-06-19 | 2013-10-08 |  | 196d | 116d |
| 66 | 2.2.3 | **T7.2.3 - Requirement traceability** | 80d | 2013-06-19 | 2013-10-08 | 28, 48 | 36d |  |
| 67 | 2.2.3.1 | O7.2.5 Captured and organized designer requirements | 4mo | 2013-06-19 | 2013-10-08 |  | 216d | 0d |
| 68 | 2.2.4 | **T7.2.4 - Validation and Verification Tools** | 60d | 2013-04-18 | 2013-07-10 | 28, 93, 97 | 0d |  |
| 69 | 2.2.4.1 | O7.2.6 V&V tool choice | 3mo | 2013-04-18 | 2013-07-10 |  | 0d |  |
| 70 | 2.2.4.2 | O7.2.7 Test automation tool choice with experience report | 3mo | 2013-04-18 | 2013-07-10 |  | 80d | 64d |
| 71 | 2.2.5 | **T7.2.5 - Safety analyses Tools** | 100d | 2013-04-24 | 2013-09-10 | 28, 98, 45 | 136d |  |
| 72 | 2.2.5.1 | O7.2.8 Safety analyses tools choices | 5mo | 2013-04-24 | 2013-09-10 |  | 316d |  |
| 73 | 2.3 | **T7.3 - Define and Develop Tool Chain** | 120d | 2013-06-19 | 2013-12-03 |  | 16d |  |
| 74 | 2.3.1 | **T7.3.1 - Overall Tool Architecture** | 84d | 2013-07-11 | 2013-11-05 | 45, 46, 48, 47, 57, 69 | 0d |  |
| 75 | 2.3.1.1 | O7.3.1 Tool chain development plan (or equivalent) | 1mo | 2013-10-09 | 2013-11-05 | 50, 64, 65, 69, 70, 53 | 16d | 0d |
| 76 | 2.3.1.2 | O7.3.2 Specification of tool interoperability mechanisms | 1mo | 2013-07-11 | 2013-08-07 |  | 80d | 64d |
| 77 | 2.3.1.3 | O7.3.3 Guideline for developing the tool chain according to CELENEC | 3mo | 2013-07-11 | 2013-10-02 |  | 0d |  |

| ID | WBS | Task | Type | Duration | Start | Finish | Predecessors | Total slack | Free slack | Constraint |
| --- | --- | --- | --- | --- | --- | --- | --- | --- | --- | --- |
| 78 | 2.3.2 | **T7.3.2 - Development Infrastructure** |  | 40d | 2013-06-19 | 2013-08-13 | 31, 67SS, 18 | 36d |  |  |
| 79 | 2.3.2.1 | O7.3.3 Specification of primary and support tool chain architecture and its embedding into the platform |  | 1mo | 2013-06-19 | 2013-07-16 |  | 276d |  |  |
| 80 | 2.3.2.2 | O7.3.4 Infrastructure evolution strategy |  | 2mo | 2013-06-19 | 2013-08-13 |  | 216d | 0d |  |
| 81 | 2.3.2.3 | O7.3.5 Tool chain infrastructure maintenance |  | 1mo | 2013-11-18 | 2013-12-13 |  | 140d |  |  |
| 82 | 2.3.3 | **T7.3.3 - Decomposition and Distribution of work** |  | 40d | 2013-08-14 | 2013-10-08 | 57, 80 | 36d | 20d |  |
| 83 | 2.3.3.1 | O7.3.6 Tool chain qualification test suite |  | 1mo | 2013-08-14 | 2013-09-10 |  | 236d | 20d |  |
| 84 | 2.3.3.2 | D7.3 Tool Chain Qualification Process Description |  | 2mo | 2013-08-14 | 2013-10-08 |  | 216d | 0d |  |
| 85 | 2.3.3.3 | O7.3.7 Tool chain maintenance and debug & continuously |  | 6mo | 2014-01-13 | 2014-06-27 |  | 0d |  |  |
| 86 | 2.3.4 | **T7.3.4 - Tool chain development** |  | 20d | 2013-11-06 | 2013-12-03 | 75, 76, 80, 83, 89SS | 16d |  |  |
| 87 | 2.3.4.1 | D7.4 Tool chain first release |  | 1mo | 2013-11-06 | 2013-12-03 | 74, 78, 82 | 16d | 0d |  |
| 88 | 2.4 | **T7.4 - Develop Open Source Ecosystem** |  | 208d | 2013-06-01 | 2014-03-19 |  | 0d |  |  |
| 89 | 2.4.1 | T7.4.1 - Develop Open Source Ecosystem |  | 6mo | 2013-10-03 | 2014-03-19 | 77 | 0d |  | start no earlier than 2012-07-01 |
| 90 | 2.4.2 | D7.5 Ecosystem Artefacts | milestone | 0d | 2013-06-01 | 2013-06-01 |  | 388d | 52d | finish no earlier than 2013-06-01 |
| 91 | 3 | **WP3** |  | 284d | 2013-01-24 | 2014-02-25 |  | 16d |  |  |
| 92 | 3.1 | WP3 dummy (Outputs for WP7) |  | 12mo | 2013-01-24 | 2013-12-25 |  | 60d | 0d |  |
| 93 | 3.2 | WP3 formalized API | milestone | 0d | 2013-01-24 | 2013-01-24 | 92SS | 60d |  |  |
| 94 | 3.3 | WP3 dummy (Inputs from WP7) |  | 3mo | 2013-12-04 | 2014-02-25 | 87 | 16d |  |  |
| 95 | 4 | **WP4** |  | 244d? | 2013-01-24 | 2013-12-31 |  | 0d |  |  |
| 96 | 4.1 | WP4 dummy (Outputs for WP7) |  | 3mo | 2013-01-24 | 2013-04-17 |  | 0d |  |  |
| 97 | 4.2 | WP4: Those sufficient elements of WP4 V&V Plan to evaluate tools | milestone | 0d | 2013-04-17 | 2013-04-17 | 96 | 0d |  |  |
| 98 | 4.3 | WP4: Those sufficient elements of WP4 Safety case to evaluate tools | milestone | 0d | 2013-04-17 | 2013-04-17 | 96 | 140d | 4d |  |
| 99 | 4.4 | WP4 dummy (Inputs from WP7) |  | 3mo? | 2013-10-09 | 2013-12-31 | 83, 84 | 56d |  |  |
| 100 | 5 | itea | milestone | 0d | 2013-08-13 | 2013-08-13 | 53, 90, 62 | 336d |  |  |
